# X

Schedule from ProjectLibre, 2024-09-09 to 2024-12-11.

## Calendars

- Padrão: Mon-Fri 08:00-12:00, 13:00-17:00; Sat-Sun off.

## Resources

| Resource | Rate |
| --- | --- |
| Não atribuído |  |
| Diogo | 20 |
| Enzo | 20 |
| Lucas | 20 |
| Thiago | 20 |

## Schedule

| ID | WBS | Task | Duration | Start | Finish | Predecessors | Complete | Baseline start | Baseline finish | Resources |
| --- | --- | --- | --- | --- | --- | --- | --- | --- | --- | --- |
| 1 | 1 | **ProjetoIZZY** | 67.72d? | 2024-09-09 08:00 | 2024-12-11 14:48 |  | 78% | 2024-09-09 08:00 | 2024-12-09 08:21 |  |
| 2 | 1.1 | **Prospecção** | 2.75d? | 2024-09-09 08:00 | 2024-09-11 15:00 |  | 100% | 2024-09-09 08:00 | 2024-09-11 15:00 |  |
| 3 | 1.1.1 | **PTEC** | 2.75d? | 2024-09-09 08:00 | 2024-09-11 15:00 |  | 100% | 2024-09-09 08:00 | 2024-09-11 15:00 |  |
| 4 | 1.1.1.1 | Estudar o domínio de aplicaçao do sistema | 1.25d | 2024-09-09 08:00 | 2024-09-10 10:00 |  | 100% | 2024-09-09 08:00 | 2024-09-10 10:00 | Diogo; Enzo; Lucas; Thiago |
| 5 | 1.1.1.2 | Redigir PTE | 1.25d? | 2024-09-09 08:00 | 2024-09-10 10:00 | 4 | 100% | 2024-09-09 08:00 | 2024-09-10 10:00 | Thiago |
| 6 | 1.1.1.3 | Revisar PTE | 2.75d? | 2024-09-09 08:00 | 2024-09-11 15:00 | 5 | 100% | 2024-09-09 08:00 | 2024-09-11 15:00 | Diogo; Enzo; Lucas |
| 7 | 1.1.2 | **Est. Prel. Tam** | 2.25d? | 2024-09-09 08:00 | 2024-09-11 10:00 |  | 100% | 2024-09-09 08:00 | 2024-09-11 10:00 |  |
| 8 | 1.1.2.1 | Estimar Tamanho do Projeto | 1d? | 2024-09-09 08:00 | 2024-09-09 17:00 | 4 | 100% | 2024-09-09 08:00 | 2024-09-09 17:00 | Enzo |
| 9 | 1.1.2.2 | Revisar Estimar Tamanho do Projeto | 2.25d? | 2024-09-09 08:00 | 2024-09-11 10:00 | 8 | 100% | 2024-09-09 08:00 | 2024-09-11 10:00 | Diogo; Enzo; Lucas |
| 10 | 1.2 | **Análise** | 16.62d? | 2024-09-10 10:00 | 2024-10-02 16:00 |  | 100% | 2024-09-10 10:00 | 2024-10-02 16:00 |  |
| 11 | 1.2.1 | **DRE** | 10.5d | 2024-09-10 10:00 | 2024-09-24 15:00 |  | 100% | 2024-09-10 10:00 | 2024-09-24 15:00 |  |
| 12 | 1.2.1.1 | Levantar Requisitos do Sistema | 7d | 2024-09-10 10:00 | 2024-09-19 10:00 | 6 | 100% | 2024-09-10 10:00 | 2024-09-19 10:00 | Diogo; Enzo; Lucas; Thiago |
| 13 | 1.2.1.2 | Redigir DRE | 7.25d | 2024-09-12 15:00 | 2024-09-23 17:00 | 12 | 100% | 2024-09-12 15:00 | 2024-09-23 17:00 | Lucas; Thiago |
| 14 | 1.2.1.3 | Revisar DRE | 5.25d | 2024-09-17 12:00 | 2024-09-24 15:00 | 13 | 100% | 2024-09-17 12:00 | 2024-09-24 15:00 | Diogo; Enzo |
| 15 | 1.2.2 | **MRB** | 10.62d? | 2024-09-18 10:00 | 2024-10-02 16:00 |  | 100% | 2024-09-18 10:00 | 2024-10-02 16:00 |  |
| 16 | 1.2.2.1 | Elaborar MRB | 10.12d? | 2024-09-18 10:00 | 2024-10-02 11:00 | 14 | 100% | 2024-09-18 10:00 | 2024-10-02 11:00 | Diogo; Enzo |
| 17 | 1.2.2.2 | Revisar MRB | 5d? | 2024-09-25 16:00 | 2024-10-02 16:00 | 16 | 100% | 2024-09-25 16:00 | 2024-10-02 16:00 | Lucas; Thiago |
| 18 | 1.3 | **Planejamento** | 17.25d? | 2024-09-18 10:00 | 2024-10-11 13:00 |  | 100% | 2024-09-18 10:00 | 2024-10-11 13:00 |  |
| 19 | 1.3.1 | Desenvolver Plano de Projeto | 13.75d? | 2024-09-18 10:00 | 2024-10-07 17:00 | 14 | 100% | 2024-09-18 10:00 | 2024-10-07 17:00 | Diogo; Enzo; Lucas; Thiago |
| 20 | 1.3.2 | Elaborar Estimativa de Tamanho/Esforço | 4.75d? | 2024-09-18 10:00 | 2024-09-24 17:00 | 14 | 100% | 2024-09-18 10:00 | 2024-09-24 17:00 | Diogo; Thiago |
| 21 | 1.3.3 | Revisar Est. de Tamanho/Esforço | 4.62d? | 2024-09-18 12:00 | 2024-09-25 09:00 | 20 | 100% | 2024-09-18 12:00 | 2024-09-25 09:00 | Enzo; Lucas |
| 22 | 1.3.4 | Elaborar Cronograma | 1d? | 2024-09-18 12:00 | 2024-09-19 13:00 | 19 | 100% | 2024-09-18 12:00 | 2024-09-19 13:00 | Thiago |
| 23 | 1.3.5 | Revisar Cronograma | 0.12d? | 2024-09-19 12:00 | 2024-09-19 14:00 | 22 | 100% | 2024-09-19 12:00 | 2024-09-19 14:00 | Thiago |
| 24 | 1.3.6 | Elaborar Protótipo | 12.75d? | 2024-09-24 15:00 | 2024-10-11 13:00 | 14 | 100% | 2024-09-24 15:00 | 2024-10-11 13:00 | Diogo |

| ID | WBS | Task | Duration | Start | Finish | Predecessors | Complete | Baseline start | Baseline finish | Constraint | Resources |
| --- | --- | --- | --- | --- | --- | --- | --- | --- | --- | --- | --- |
| 25 | 1.4 | **Desenvolvimento** | 19.73d? | 2024-11-04 08:00 | 2024-11-29 14:48 |  | 76% | 2024-11-04 08:00 | 2024-11-27 08:21 |  |  |
| 26 | 1.4.1 | **Sprint 1** | 5.75d? | 2024-11-04 08:00 | 2024-11-11 15:00 |  | 100% | 2024-11-04 08:00 | 2024-11-11 15:00 |  |  |
| 27 | 1.4.1.1 | **Implementação** | 5.69d? | 2024-11-04 08:00 | 2024-11-11 14:30 |  | 100% | 2024-11-04 08:00 | 2024-11-11 14:30 |  |  |
| 28 | 1.4.1.1.1 | Manter Usuários | 3.5d? | 2024-11-04 08:00 | 2024-11-07 13:00 |  | 100% | 2024-11-04 08:00 | 2024-11-07 13:00 | start no earlier than 2024-11-04 08:00 | Diogo; Enzo; Lucas; Thiago |
| 29 | 1.4.1.1.2 | Realizar Testes | 0.12d | 2024-11-08 08:00 | 2024-11-08 09:00 | 28 | 100% | 2024-11-08 08:00 | 2024-11-08 09:00 | start no earlier than 2024-11-08 08:00 | Thiago |
| 30 | 1.4.1.1.3 | Manter IZZY's | 1.44d? | 2024-11-08 09:00 | 2024-11-11 13:30 | 29 | 100% | 2024-11-08 09:00 | 2024-11-11 13:30 |  | Enzo; Lucas |
| 31 | 1.4.1.1.4 | Realizar Testes | 0.12d? | 2024-11-11 13:30 | 2024-11-11 14:30 | 30 | 100% | 2024-11-11 13:30 | 2024-11-11 14:30 | start no earlier than 2024-11-11 08:00 | Thiago |
| 32 | 1.4.1.2 | **Gerência de Configuração** | 0.06d? | 2024-11-11 14:30 | 2024-11-11 15:00 |  | 100% | 2024-11-11 14:30 | 2024-11-11 15:00 |  |  |
| 33 | 1.4.1.2.1 | Gerar nova Tag de Configuração | 0.06d? | 2024-11-11 14:30 | 2024-11-11 15:00 | 31 | 100% | 2024-11-11 14:30 | 2024-11-11 15:00 |  | Thiago |
| 34 | 1.4.2 | **Sprint 2** | 3.56d? | 2024-11-12 15:00 | 2024-11-18 10:30 |  | 100% | 2024-11-12 15:00 | 2024-11-18 10:45 |  |  |
| 35 | 1.4.2.1 | **Implementação** | 3.44d? | 2024-11-12 15:00 | 2024-11-18 09:30 |  | 100% | 2024-11-12 15:00 | 2024-11-18 09:15 |  |  |
| 36 | 1.4.2.1.1 | Manter Atividades | 3.25d? | 2024-11-12 15:00 | 2024-11-15 17:00 | 33 | 100% | 2024-11-12 15:00 | 2024-11-18 08:30 | start no earlier than 2024-11-12 15:00 | Diogo; Enzo; Thiago |
| 37 | 1.4.2.1.2 | Realizar Testes | 0.19d? | 2024-11-18 08:00 | 2024-11-18 09:30 | 36 | 100% | 2024-11-18 08:30 | 2024-11-18 09:15 |  | Lucas |
| 38 | 1.4.2.2 | **Monitoramento de Controle** | 0.06d? | 2024-11-18 09:30 | 2024-11-18 10:00 |  | 100% | 2024-11-18 09:15 | 2024-11-18 10:15 |  |  |
| 39 | 1.4.2.2.1 | Atualizar Cronograma | 0.06d? | 2024-11-18 09:30 | 2024-11-18 10:00 | 37 | 100% | 2024-11-18 09:15 | 2024-11-18 10:15 |  | Enzo; Lucas |
| 40 | 1.4.2.3 | **Gerência de Configuração** | 0.06d | 2024-11-18 10:00 | 2024-11-18 10:30 |  | 100% | 2024-11-18 10:15 | 2024-11-18 10:45 |  |  |
| 41 | 1.4.2.3.1 | Gerar nova Tag de Configuração | 0.06d | 2024-11-18 10:00 | 2024-11-18 10:30 | 39 | 100% | 2024-11-18 10:15 | 2024-11-18 10:45 |  | Enzo |
| 42 | 1.4.3 | **Sprint 3** | 5.31d? | 2024-11-18 10:30 | 2024-11-25 14:00 |  | 100% | 2024-11-18 10:45 | 2024-11-21 10:45 |  |  |
| 43 | 1.4.3.1 | **Implementação** | 5.19d? | 2024-11-18 10:30 | 2024-11-25 13:00 |  | 100% | 2024-11-18 10:45 | 2024-11-21 10:45 |  |  |
| 44 | 1.4.3.1.1 | Manter Membros de IZZY | 3.69d | 2024-11-18 10:30 | 2024-11-21 17:00 | 41 | 100% | 2024-11-18 10:45 | 2024-11-20 15:45 |  | Diogo; Enzo; Thiago |
| 45 | 1.4.3.1.2 | Realizar Testes | 0.12d? | 2024-11-22 08:00 | 2024-11-22 09:00 | 44 | 100% | 2024-11-20 15:45 | 2024-11-21 10:45 |  | Lucas |
| 46 | 1.4.3.1.3 | Relatório de Atividades | 1.12d? | 2024-11-22 09:00 | 2024-11-25 10:00 | 45 | 100% | 2024-11-18 10:45 | 2024-11-19 13:45 |  | Diogo; Lucas |
| 47 | 1.4.3.1.4 | Realizar Testes | 0.25d? | 2024-11-25 10:00 | 2024-11-25 13:00 | 46 | 100% | 2024-11-19 13:45 | 2024-11-19 15:45 |  | Enzo; Thiago |
| 48 | 1.4.3.2 | **Monitoramento de Controle** | 0.06d? | 2024-11-25 12:00 | 2024-11-25 13:30 |  | 100% | 2024-11-19 15:45 | 2024-11-20 15:45 |  |  |
| 49 | 1.4.3.2.1 | Atualizar Cronograma | 0.06d? | 2024-11-25 12:00 | 2024-11-25 13:30 | 47 | 100% | 2024-11-19 15:45 | 2024-11-20 15:45 |  | Thiago |

| ID | WBS | Task | Duration | Start | Finish | Predecessors | Complete | Baseline start | Baseline finish | Constraint | Resources |
| --- | --- | --- | --- | --- | --- | --- | --- | --- | --- | --- | --- |
| 50 | 1.4.3.3 | **Gerência de Configuração** | 0.06d | 2024-11-25 13:30 | 2024-11-25 14:00 |  | 100% | 2024-11-20 15:45 | 2024-11-20 16:33 |  |  |
| 51 | 1.4.3.3.1 | Gerar nova Tag de Configuração | 0.06d | 2024-11-25 13:30 | 2024-11-25 14:00 | 49 | 100% | 2024-11-20 15:45 | 2024-11-20 16:33 |  | Thiago |
| 52 | 1.4.4 | **Sprint 4** | 4.1d? | 2024-11-25 14:00 | 2024-11-29 14:48 |  |  | 2024-11-20 16:33 | 2024-11-27 08:21 |  |  |
| 53 | 1.4.4.1 | **Implementação** | 3d? | 2024-11-25 14:00 | 2024-11-28 14:00 |  |  | 2024-11-20 16:33 | 2024-11-25 16:33 |  |  |
| 54 | 1.4.4.1.1 | Relatório de Atividades Atrasadas | 1.88d | 2024-11-25 14:00 | 2024-11-27 13:00 | 51 |  | 2024-11-20 16:33 | 2024-11-22 15:33 |  |  |
| 55 | 1.4.4.1.2 | Realizar Testes | 0.38d | 2024-11-27 13:00 | 2024-11-27 16:00 | 54 |  | 2024-11-22 15:33 | 2024-11-25 09:33 |  |  |
| 56 | 1.4.4.1.3 | Relatório de Participação dos Membros | 2.5d? | 2024-11-25 14:00 | 2024-11-28 09:00 | 51 |  | 2024-11-20 16:33 | 2024-11-25 11:33 |  |  |
| 57 | 1.4.4.1.4 | Realizar Testes | 0.5d? | 2024-11-28 09:00 | 2024-11-28 14:00 | 56 |  | 2024-11-25 11:33 | 2024-11-25 16:33 |  |  |
| 58 | 1.4.4.2 | **Monitoramento de Controle** | 1d? | 2024-11-28 14:00 | 2024-11-29 14:00 |  |  | 2024-11-25 16:33 | 2024-11-26 16:33 |  |  |
| 59 | 1.4.4.2.1 | Atualizar Cronograma | 1d? | 2024-11-28 14:00 | 2024-11-29 14:00 | 57 |  | 2024-11-25 16:33 | 2024-11-26 16:33 |  |  |
| 60 | 1.4.4.3 | **Gerência de Configuração** | 0.1d | 2024-11-29 14:00 | 2024-11-29 14:48 |  |  | 2024-11-26 16:33 | 2024-11-27 08:21 |  |  |
| 61 | 1.4.4.3.1 | Gerar nova Tag de Configuração | 0.1d | 2024-11-29 14:00 | 2024-11-29 14:48 | 59 |  | 2024-11-26 16:33 | 2024-11-27 08:21 |  |  |
| 62 | 1.5 | **Fechamento** | 8d? | 2024-11-29 14:48 | 2024-12-11 14:48 |  |  | 2024-11-27 08:21 | 2024-12-09 08:21 |  |  |
| 63 | 1.5.1 | Apresentação do projeto ao cliente | 2d? | 2024-11-29 14:48 | 2024-12-03 14:48 | 61 |  | 2024-11-27 08:21 | 2024-11-29 08:21 |  |  |
| 64 | 1.5.2 | Entrega do projeto ao cliente | 2d? | 2024-12-03 14:48 | 2024-12-05 14:48 | 63 |  | 2024-11-29 08:21 | 2024-12-03 08:21 |  |  |
| 65 | 1.5.3 | Implantação do sistema | 4d? | 2024-12-05 14:48 | 2024-12-11 14:48 | 64 |  | 2024-12-03 08:21 | 2024-12-09 08:21 |  |  |
| 66 | 1.6 | Finalização | 0d? | 2024-12-11 14:48 | 2024-12-11 14:48 | 65 |  | 2024-12-09 08:21 | 2024-12-09 08:21 | start no earlier than 2024-09-09 08:00 |  |
